Schedule from OmniPlan, 2016-07-14 to 2016-08-03.
Project start 2016-07-12

## Resources

| Resource | Group |
| --- | --- |
| 资源 1 | staff |
| 设备 1 | equipment |
| 素材 1 | material |
| 群组 1 | group |
| IOS-付 | staff |
| Server-蒲 | staff |
| Android-郭 | staff |
| Android-胡 | staff |
| Client-李-胡 | staff |
| Client-付-郭 | staff |
| Test－王 | staff |
| IOS-左恒松 | staff |
| IOS-乔汝嘉 | staff |

## Schedule

| ID | WBS | Task | Start | Predecessors | Constraint | Resources | Work |
| --- | --- | --- | --- | --- | --- | --- | --- |
| 1 | 1 | **视频** |  |  | start no earlier than 2016-07-11 |  |  |
| 2 | 1.1 | **活动反馈（活动评价，只有跳转逻辑重写）** |  |  |  |  |  |
| 3 | 1.1.1 | 直播情况 |  |  |  | Client-李-胡 | 2h |
| 4 | 1.1.2 | 回放情况 |  |  |  | Client-李-胡 | 4h |
| 5 | 1.2 | 回放互动 |  | 2 |  | Client-李-胡 | 28h |
| 6 | 1.3 | 直播页面 |  | 5 |  | Client-李-胡 | 20h |
| 7 | 1.4 | 非Wi-Fi情况下的观看视频 |  | 6 |  | Client-李-胡 | 6h |
| 8 | 1.5 | 播放课件视频 |  | 7 |  | Client-李-胡 | 4h |
| 9 | 2 | **IM_IOS组** |  |  | start no earlier than 2016-07-13 |  |  |
| 10 | 2.1 | 集成SDK |  |  | start no earlier than 2016-07-13 | IOS-付 | 8h |
| 11 | 2.2 | 初始化 | 2016-07-14 | 10 | start locked to 2016-07-14 | IOS-付 | 4h |
| 12 | 2.3 | IM登录 |  | 11 | start no earlier than 2016-07-14 | IOS-付 | 10h |
| 13 | 2.4 | 票据过期 |  | 12 | start no earlier than 2016-07-18 | IOS-付 | 12h |
| 14 | 2.5 | 私聊基本流程搭建 |  | 13 | start no earlier than 2016-07-20 | IOS-付 | 8h |
| 15 | 2.6 | 监听、消息处理 |  | 14 | start no earlier than 2016-07-21 | IOS-付 | 36h |
| 16 | 2.7 | 私聊完整样式调整 |  | 14 | start no earlier than 2016-07-21 | IOS-左恒松 | 52h |
| 17 | 2.8 | 会话列表私聊消息显示及处理 |  | 16SS | start no earlier than 2016-07-21 | IOS-乔汝嘉 | 12h |
| 18 | 2.9 | 群聊 |  | 17 | start no earlier than 2016-07-22 | IOS-乔汝嘉 | 16h |
| 19 | 2.10 | 医大帮小助手 |  | 18 | start no earlier than 2016-07-26 | IOS-乔汝嘉 | 4h |
| 20 | 2.11 | 欢迎 | 2016-07-27 | 19 | start locked to 2016-07-27 | IOS-乔汝嘉 | 4h |
| 21 | 2.12 | 会话列表完整显示及处理 | 2016-07-27 | 20 | start locked to 2016-07-27 | IOS-乔汝嘉 | 16h |
| 22 | 2.13 | 群聊样式基于私聊扩展 |  | 16 | start no earlier than 2016-07-29 | IOS-左恒松 | 4h |
| 23 | 2.14 | **活动** |  |  | start no earlier than 2016-07-27 |  |  |
| 24 | 2.14.1 | 活动界面搭建 | 2016-07-27 | 15 | start locked to 2016-07-27 | IOS-付 | 12h |
| 25 | 2.14.2 | 活动互动显示 |  | 24 | start no earlier than 2016-07-29 | IOS-付 | 8h |
| 26 | 2.14.3 | 互动发消息及底部样式 |  | 25 | start no earlier than 2016-08-01 | IOS-付 | 24h |
| 27 | 2.14.4 | 互动只看问答列表 |  | 21 | start no earlier than 2016-07-29 | IOS-乔汝嘉 | 24h |
| 28 | 2.14.5 | 互动问答样式 |  | 22 | start no earlier than 2016-08-01 | IOS-左恒松 | 12h |
| 29 | 2.14.6 | 在线人数 |  | 28 | start no earlier than 2016-08-02 | IOS-左恒松 | 4h |
| 30 | 2.15 | 修改用户资料，用户信息刷新 |  | 29 | start no earlier than 2016-08-03 | IOS-左恒松 | 8h |
| 31 | 2.16 | 工作室审核接收消息处理 |  | 30 | start no earlier than 2016-08-04 | IOS-左恒松 | 8h |
| 32 | 2.17 | APNS设置、接收 | 2016-08-03 | 27 | start locked to 2016-08-03 | IOS-乔汝嘉 | 8h |
| 33 | 2.18 | 更多中消息缓存处理 |  | 32 | start no earlier than 2016-08-04 | IOS-乔汝嘉 | 12h |
| 34 | 2.19 | 讨论组红点 |  | 26 | start no earlier than 2016-08-04 | IOS-付 | 10h |
| 35 | 2.20 | 同行红点 |  | 34 | start no earlier than 2016-08-05 | IOS-付 | 8h |

| ID | WBS | Task | Predecessors | Constraint | Resources | Work |
| --- | --- | --- | --- | --- | --- | --- |
| 36 | 3 | **SERVER组** |  | start no earlier than 2016-07-11 |  |  |
| 37 | 3.1 | 更换域名 |  | start no earlier than 2016-07-12 |  | 40h |
| 38 | 3.2 | 云通讯sdk服务 | 37 | start no earlier than 2016-07-19 | Server-蒲 | 32h |
| 39 | 3.3 | 更换消息接口 | 38 | start no earlier than 2016-07-26 | Server-蒲 | 40h |
| 40 | 3.4 | 云通讯模块数据模型设计 | 39 |  | Server-蒲 | 32h |
| 41 | 3.5 | 云通讯回调 | 40 | start no earlier than 2016-08-07 | Server-蒲 | 24h |
| 42 | 4 | **Android组** |  | start no earlier than 2016-07-11 |  |  |
| 43 | 4.1 | sdk接入测试 |  | start no earlier than 2016-07-11 | Android-郭 | 16h |
| 44 | 4.2 | 初始化相关 | 43 |  | Android-郭 | 12h |
| 45 | 4.3 | 同步用户数据 | 44 |  | Android-郭 | 8h |
| 46 | 4.4 | **c2c私聊用户老师和学生之间** | 45 | start no earlier than 2016-07-18 |  |  |
| 47 | 4.4.1 | 消息类型 |  |  | Android-郭 | 24h |
| 48 | 4.4.2 | 样式调整 | 47 |  | Android-郭 | 4h |
| 49 | 4.4.3 | 历史数据加载（服务端） | 48 |  | Android-郭 | 4h |
| 50 | 4.4.4 | 欢迎页面 | 49 |  | Android-郭 | 1h |
| 51 | 4.5 | 消息列表 | 46 | start no earlier than 2016-07-22 |  | 12h |
| 52 | 4.6 | 离线通知 | 51 | start no earlier than 2016-07-25 | Android-郭 | 16h |
| 53 | 4.7 | **直播活动** | 52 |  |  |  |
| 54 | 4.7.1 | 直播提问界面 |  |  | Android-郭 | 8h |
| 55 | 4.7.2 | 消息类型－问答 | 54 |  | Android-郭 | 2h |
| 56 | 4.7.3 | 点赞 | 55 |  | Android-郭 | 8h |
| 57 | 4.7.4 | 在线人数 | 56 |  | Android-郭 | 4h |
| 58 | 4.7.5 | 提问样式调整 | 57 |  | Android-郭 | 8h |
| 59 | 4.7.6 | 只看问答 | 58 |  | Android-郭 | 8h |
| 60 | 4.7.7 | 同问 | 59 |  | Android-郭 | 8h |
| 61 | 4.7.8 | 小助手 转为问题 | 60 |  | Android-郭 | 8h |

| ID | WBS | Task | Predecessors | Complete | Constraint | Resources | Work | Actual work |
| --- | --- | --- | --- | --- | --- | --- | --- | --- |
| 62 | 4.8 | **只看问答** | 53 |  |  |  |  |  |
| 63 | 4.8.1 | 接口调用 |  |  |  | Android-郭 | 4h |  |
| 64 | 4.8.2 | 问答显示 | 63 |  |  | Android-郭 | 16h |  |
| 65 | 4.9 | 搭界面－chatActivity |  |  | start no earlier than 2016-07-12 | Android-胡 | 28h |  |
| 66 | 4.10 | **信鸽** | 65 |  | start no earlier than 2016-07-18 |  |  |  |
| 67 | 4.10.1 | 审核通过 |  |  |  | Android-胡 | 8h |  |
| 68 | 4.10.2 | 帖子回复通知 | 67 |  |  | Android-胡 | 8h |  |
| 69 | 4.10.3 | 加入工作室成功 | 68 |  |  | Android-胡 | 8h |  |
| 70 | 4.10.4 | 信鸽sdk接入 | 69 |  |  | Android-胡 | 8h |  |
| 71 | 4.11 | 界面优化 | 66 |  | start no earlier than 2016-07-22 |  | 12h |  |
| 72 | 4.12 | 工作室群聊 | 71 |  | start no earlier than 2016-07-25 |  | 20h |  |
| 73 | 4.13 | 直播活动消息类型 | 72 |  | start no earlier than 2016-07-28 |  | 8h |  |
| 74 | 4.14 | item 页面 | 73 |  | start no earlier than 2016-07-29 | Android-胡 | 20h |  |
| 75 | 4.15 | 医大帮小助手 | 74 |  | start no earlier than 2016-08-02 | Android-胡 | 4h |  |
| 76 | 4.16 | 票据过期 | 75 |  | start no earlier than 2016-08-03 |  | 8h |  |
| 77 | 4.17 | 界面优化 | 76 |  | start no earlier than 2016-08-04 |  | 20h |  |
| 78 | 4.18 | 转诊 | 77 |  | start no earlier than 2016-08-08 | Android-胡 | 16h |  |
| 79 | 5 | **测试文档＋自动化学习** |  |  | start no earlier than 2016-07-12 |  |  |  |
| 80 | 5.1 | 编写测试文档 |  |  | start no earlier than 2016-07-21 | Test－王 | 40h |  |
| 81 | 5.2 | 查找自动化测试工具 | 80 |  | start no earlier than 2016-07-28 | Test－王 | 16h |  |
| 82 | 5.3 | 工具使用 | 81 |  | start no earlier than 2016-07-29 | Test－王 | 24h |  |
| 83 | 5.4 | 脚本编写 | 82 |  | start no earlier than 2016-08-04 | Test－王 | 40h |  |
| 84 | 5.5 | 每天测试线上版本，找bug | 83 |  | start no earlier than 2016-08-11 | Test－王 | 40h |  |
| 85 | 6 | **测试&buffer** | 9 |  | start no earlier than 2016-08-12 |  |  |  |
| 86 | 6.1 | 注册 |  | 12% | start no earlier than 2016-08-17 | Test－王 | 2h | 0.25h |
| 87 | 6.2 | 登录／首次到首页的提示消息 | 86 |  | start no earlier than 2016-08-18 | Test－王 | 2h |  |
| 88 | 6.3 | 医师认证 | 87 |  | start no earlier than 2016-08-18 | Test－王 | 2h |  |
| 89 | 6.4 | 首页－banner | 88 |  | start no earlier than 2016-08-18 | Test－王 | 2h |  |
| 90 | 6.5 | 首页－发帖子 | 89 |  | start no earlier than 2016-08-18 | Test－王 | 2h |  |
| 91 | 6.6 | 同行－发帖子 | 90 |  | start no earlier than 2016-08-19 | Test－王 | 2h |  |
| 92 | 6.7 | 同行－帖子列表 | 91 |  | start no earlier than 2016-08-19 | Test－王 | 2h |  |
| 93 | 6.8 | 同行－帖子详情 | 92 |  | start no earlier than 2016-08-22 | Test－王 | 4h |  |
| 94 | 6.9 | 工作室主页－讨论社区 | 93 |  | start no earlier than 2016-08-22 | Test－王 | 2h |  |
| 95 | 6.10 | 工作室主页－列表信息 | 94 |  | start no earlier than 2016-08-22 | Test－王 | 1h |  |
| 96 | 6.11 | 工作室主页－更多 | 95 |  | start no earlier than 2016-08-23 | Test－王 | 1h |  |
| 97 | 6.12 | 工作室主页－转诊 | 96 |  | start no earlier than 2016-08-23 | Test－王 | 2h |  |
| 98 | 6.13 | 工作室主页－私聊 | 97 |  | start no earlier than 2016-08-23 | Test－王 | 3h |  |
| 99 | 6.14 | 工作室主页－群聊 | 98 |  | start no earlier than 2016-08-23 | Test－王 | 4h |  |
| 100 | 6.15 | 个人主页 | 99 |  | start no earlier than 2016-08-24 | Test－王 | 2h |  |
| 101 | 6.16 | 活动页面－类型分类 | 100 |  | start no earlier than 2016-08-24 | Test－王 | 2h |  |
| 102 | 6.17 | 活动－正在直播区域 | 101 |  | start no earlier than 2016-08-25 | Test－王 | 2h |  |
| 103 | 6.18 | 活动报名 | 102 |  | start no earlier than 2016-08-24 | Test－王 | 2h |  |
| 104 | 6.19 | 正在直播活动－聊天 | 103 |  | start no earlier than 2016-08-24 | Test－王 | 4h |  |
| 105 | 6.20 | 正在直播活动－视频播放 | 104 |  | start no earlier than 2016-08-26 | Test－王 | 2h |  |
| 106 | 6.21 | 直播活动反馈 | 105 |  | start no earlier than 2016-08-26 | Test－王 | 4h |  |
| 107 | 6.22 | 活动回放－视频播放 | 106 |  | start no earlier than 2016-08-25 | Test－王 | 2h |  |
| 108 | 6.23 | 活动回放－发布新帖子 | 107 |  | start no earlier than 2016-08-25 | Test－王 | 2h |  |
| 109 | 6.24 | 活动回放－帖子列表 | 108 |  | start no earlier than 2016-08-29 | Test－王 | 2h |  |
| 110 | 6.25 | 活动回放反馈 | 109 |  | start no earlier than 2016-08-29 | Test－王 | 2h |  |
| 111 | 6.26 | 我的页面－修改个人资料 | 110 |  | start no earlier than 2016-08-29 | Test－王 | 2h |  |
| 112 | 6.27 | 我的页面－列表信息 | 111 |  | start no earlier than 2016-08-30 | Test－王 | 2h |  |
| 113 | 6.28 | 我的页面－转诊 | 112 |  | start no earlier than 2016-08-30 | Test－王 | 2h |  |
| 114 | 6.29 | 我的页面－设置 | 113 |  | start no earlier than 2016-08-30 | Test－王 | 1h |  |
| 115 | 6.30 | 整体流程 | 114 |  | start no earlier than 2016-08-26 | Test－王 | 8h |  |
| 116 | 6.31 | 压力测试 | 115 |  | start no earlier than 2016-08-30 | Test－王 | 16h |  |
| 117 | 6.32 | 检验bug＋上线前必测内容 | 116 |  | start no earlier than 2016-08-31 | Test－王 | 8h |  |
| 118 | 6.33 | buffer | 117 |  | start no earlier than 2016-07-20 |  | 24h |  |
